# Lehong 2019

Schedule from MS Project, 2018-03-01 to 2019-03-26.

## Calendars

- Standard: Mon-Fri 09:00-17:00; Sat-Sun off.

## Resources

| Resource |
| --- |
| Sylvia More |
| Emilia Mohapi |
| Julie Smith |
| Kabelo Mohapi |
| Neo Mohapi |
| Andy Johns |
| Jackie Whiley |
| Blantina Morake |
| Project Support Officer |
| Randy Schepers |
| Miles Mchunu |
| Daniel Lee |
| Justine Leakey |
| Derek Rivett |
| Manzi Nisela |
| Amos Mokoena |
| Elias Makoti |
| Ollie Volta |
| Local Inspection Authority |

## Schedule

| ID | WBS | Task | Type | Duration | Start | Finish | Predecessors | Total slack | Free slack | Constraint | Resources | Work |
| --- | --- | --- | --- | --- | --- | --- | --- | --- | --- | --- | --- | --- |
| 1 | 1 | **Lehong 2019** |  | 279d | 2018-03-01 | 2019-03-26 |  | 0d |  | start no earlier than 2018-03-01 |  | 4736h |
| 2 | 1.1 | **Planning** |  | 66d | 2018-03-01 | 2018-06-01 |  | 0d |  |  |  | 1256h |
| 3 | 1.1.1 | Deciding on Project Concept |  | 7d | 2018-03-01 | 2018-03-09 |  | 0d |  | must start on 2018-03-01 | Sylvia More; Emilia Mohapi; Julie Smith; Kabelo Mohapi; Neo Mohapi; Andy Johns; Jackie Whiley | 392h |
| 4 | 1.1.2 | Concept Review |  | 5d | 2018-03-12 | 2018-03-16 | 3 | 54d |  | start no earlier than 2018-03-12 | Andy Johns | 40h |
| 5 | 1.1.3 | Determining Budget |  | 14d | 2018-03-12 | 2018-03-29 | 3 | 10d |  | start no earlier than 2018-03-12 | Sylvia More; Jackie Whiley | 224h |
| 6 | 1.1.4 | **Engage Contractors** |  | 40d | 2018-04-06 | 2018-06-01 |  | 5d |  | start no earlier than 2018-03-09 |  | 600h |
| 7 | 1.1.4.1 | Quantify space requirements |  | 5d | 2018-04-06 | 2018-04-12 | 3 | 125d |  | start no earlier than 2018-04-06 | Andy Johns | 40h |
| 8 | 1.1.4.2 | Contractor Negotiations |  | 35d | 2018-04-13 | 2018-05-31 | 5 | 0d |  | start no earlier than 2018-04-13 | Sylvia More; Blantina Morake | 560h |
| 9 | 1.1.4.3 | Milestone 1 | milestone, manual | 0d | 2018-06-01 | 2018-06-01 | 8 |  |  |  |  |  |
| 10 | 1.2 | **Project Management** |  | 40d | 2018-06-01 | 2018-07-26 |  | 10d |  |  |  | 360h |
| 11 | 1.2.1 | Communication Strategy |  | 5d | 2018-06-01 | 2018-06-07 | 8 | 10d |  | start no earlier than 2018-05-20 | Emilia Mohapi | 40h |
| 12 | 1.2.2 | Support Services |  | 40d | 2018-06-01 | 2018-07-26 | 8 | 20d | 11d | start no earlier than 2018-05-20 | Project Support Officer | 320h |
| 13 | 1.3 | **Safety and Environment** |  | 15d | 2018-06-01 | 2018-06-21 |  | 0d |  |  |  | 240h |
| 14 | 1.3.1 | Safety Analysis Report |  | 15d | 2018-06-01 | 2018-06-21 | 4, 5, 8 | 0d |  | start no earlier than 2018-03-04 | Kabelo Mohapi | 120h |
| 15 | 1.3.2 | Probabilistic Risk Assessment |  | 15d | 2018-06-01 | 2018-06-21 | 4, 5, 8 | 0d |  | start no earlier than 2018-02-11 | Neo Mohapi | 120h |
| 16 | 1.4 | **Design** |  | 40d | 2018-06-22 | 2018-08-16 | 11 | 0d |  |  |  | 960h |
| 17 | 1.4.1 | Industrial Design |  | 40d | 2018-06-22 | 2018-08-16 | 4, 14, 15 | 0d |  | start no earlier than 2018-06-22 | Randy Schepers | 320h |
| 18 | 1.4.2 | **Mechanical Design** |  | 40d | 2018-06-22 | 2018-08-16 |  | 15d |  |  |  | 640h |
| 19 | 1.4.2.1 | Production line control software program |  | 40d | 2018-06-22 | 2018-08-16 | 15, 4 | 15d |  | start no earlier than 2018-06-22 | Andy Johns | 320h |
| 20 | 1.4.2.2 | Production train design |  | 40d | 2018-06-22 | 2018-08-16 | 15, 4 | 15d |  | start no earlier than 2018-06-22 | Miles Mchunu | 320h |
| 21 | 1.5 | **Preconstruction** |  | 39d | 2018-08-13 | 2018-10-05 |  | 0d |  |  |  | 520h |
| 22 | 1.5.1 | Waste Acceptance Criteria |  | 15d | 2018-08-17 | 2018-09-06 | 17 | 0d |  | start no earlier than 2018-08-12 | Project Support Officer | 120h |
| 23 | 1.5.2 | Quality Assurance |  | 10d | 2018-09-07 | 2018-09-20 | 22, 19, 20, 17 | 0d |  | start no earlier than 2018-08-26 | Andy Johns | 80h |
| 24 | 1.5.3 | Subcontractor Training |  | 30d | 2018-08-13 | 2018-09-21 | 8, 12 | 9d |  | start no earlier than 2018-08-12 | Blantina Morake | 240h |
| 25 | 1.5.4 | Readiness Review |  | 7d | 2018-09-21 | 2018-10-01 | 23, 22 | 0d |  |  | Andy Johns | 56h |
| 26 | 1.5.5 | Site-clearing permission |  | 3d | 2018-10-02 | 2018-10-04 | 25 | 0d |  | start no earlier than 2018-10-02 | Andy Johns | 24h |
| 27 | 1.5.6 | Milestone 2 | milestone, manual | 0d | 2018-10-05 | 2018-10-05 | 26 |  |  |  |  |  |

| ID | WBS | Task | Type | Duration | Start | Finish | Predecessors | Total slack | Free slack | Constraint | Resources | Work |
| --- | --- | --- | --- | --- | --- | --- | --- | --- | --- | --- | --- | --- |
| 28 | 1.6 | **Construction** |  | 60d | 2018-10-05 | 2018-12-27 | 24 | 0d |  | start no earlier than 2018-06-29 |  | 560h |
| 29 | 1.6.1 | Site-clearing |  | 20d | 2018-10-05 | 2018-11-01 | 7, 26 | 0d |  | start no earlier than 2018-07-29 | Randy Schepers | 160h |
| 30 | 1.6.2 | **Building of Facility** |  | 40d | 2018-11-02 | 2018-12-27 |  | 0d |  |  |  | 400h |
| 31 | 1.6.2.1 | Foundation |  | 10d | 2018-11-02 | 2018-11-15 | 29 | 0d |  | start no earlier than 2018-04-08 | Randy Schepers | 80h |
| 32 | 1.6.2.2 | Structures |  | 10d | 2018-11-16 | 2018-11-29 | 31 | 0d |  | start no earlier than 2018-01-28 | Derek Rivett | 80h |
| 33 | 1.6.2.3 | Roofing |  | 10d | 2018-11-30 | 2018-12-13 | 32 | 0d |  | start no earlier than 2018-04-15 | Justine Leakey | 80h |
| 34 | 1.6.2.4 | Water Proofing |  | 10d | 2018-12-14 | 2018-12-27 | 33 | 0d |  | start no earlier than 2018-03-18 | Manzi Nisela | 80h |
| 35 | 1.6.2.5 | Building Electrification |  | 10d | 2018-12-14 | 2018-12-27 | 33 | 0d |  | start no earlier than 2018-02-25 | Ollie Volta | 80h |
| 36 | 1.7 | **Installation** |  | 50d | 2018-12-28 | 2019-03-07 |  | 0d |  |  |  | 624h |
| 37 | 1.7.1 | Install semi-automatic woodworking production train |  | 20d | 2018-12-28 | 2019-01-24 | 20, 25, 30 | 0d |  | start no earlier than 2018-03-04 | Amos Mokoena; Elias Makoti | 320h |
| 38 | 1.7.2 | Paint shop installation |  | 15d | 2019-01-25 | 2019-02-14 | 30, 37 | 0d |  | start no earlier than 2018-02-25 | Amos Mokoena | 120h |
| 39 | 1.7.3 | Hardware Installation |  | 10d | 2019-02-15 | 2019-02-28 | 38, 37 | 0d |  | start no earlier than 2018-02-25 | Elias Makoti | 80h |
| 40 | 1.7.4 | Software Installation |  | 5d | 2019-03-01 | 2019-03-07 | 39 | 0d |  | start no earlier than 2018-02-25 | Andy Johns | 40h |
| 41 | 1.7.5 | Install compressor |  | 4d | 2019-02-15 | 2019-02-20 | 38 | 11d | 0d | start no earlier than 2018-03-04 | Ollie Volta | 32h |
| 42 | 1.7.6 | Install Air-conditioning |  | 4d | 2019-02-21 | 2019-02-26 | 41 | 20d |  | start no earlier than 2018-02-25 | Ollie Volta | 32h |
| 43 | 1.8 | **Final Inspection** |  | 58d | 2018-12-28 | 2019-03-20 |  | 0d |  |  |  | 136h |
| 44 | 1.8.1 | Complete production train inspection |  | 5d | 2019-03-08 | 2019-03-14 | 37, 40 | 0d |  | start no earlier than 2018-02-18 | Andy Johns | 40h |
| 45 | 1.8.2 | Paint shop inspection |  | 5d | 2019-02-21 | 2019-02-27 | 38, 41 | 11d |  | start no earlier than 2018-02-25 | Andy Johns | 40h |
| 46 | 1.8.3 | Building Inspection |  | 4d | 2018-12-28 | 2019-01-02 | 30 | 51d |  | start no earlier than 2018-12-28 | Andy Johns | 32h |
| 47 | 1.8.4 | Final approval |  | 3d | 2019-03-15 | 2019-03-19 | 44, 45, 46 | 0d |  | start no earlier than 2018-02-25 | Local Inspection Authority | 24h |
| 48 | 1.8.5 | Milestone 3 | milestone, manual | 0d | 2019-03-20 | 2019-03-20 | 47 |  |  |  |  |  |
| 49 | 1.9 | **Commissioning** |  | 5d | 2019-03-20 | 2019-03-26 |  | 0d |  |  |  | 80h |
| 50 | 1.9.1 | Production start-up |  | 5d | 2019-03-20 | 2019-03-26 | 47 | 0d |  | start no earlier than 2018-02-25 | Andy Johns; Miles Mchunu | 80h |
